# Biobank2

Schedule from Planner, 2009-05-19 to 2009-07-29.

## Calendars

- Default: Mon-Fri 08:00-12:00, 13:00-17:00; Sat-Sun off.

## Resources

| Resource |
| --- |
| Programmer 2 |
| Programmer 1 |

## Schedule

| ID | WBS | Task | Start | Finish | Predecessors | Resources | Work |
| --- | --- | --- | --- | --- | --- | --- | --- |
| 1 | 1 | Finish current forms | 2009-05-19 | 2009-05-25 |  | Programmer 1 | 40h |
| 2 | 2 | datamatrix decoding library | 2009-05-26 | 2009-06-08 | 1 | Programmer 1 | 80h |
| 3 | 3 | Export data from BBPDB and import to Biobank2 | 2009-06-09 | 2009-06-29 | 2 | Programmer 1 | 120h |
| 4 | 4 | parse xml for possible servers | 2009-06-30 | 2009-06-30 | 3 | Programmer 1 | 8h |
| 5 | 5 | Log out when no activity detected on java client | 2009-07-01 | 2009-07-01 | 4 | Programmer 1 | 8h |
| 6 | 6 | cascade settings | 2009-07-02 | 2009-07-08 | 5 | Programmer 1 | 40h |
| 7 | 7 | enable logging capability | 2009-07-09 | 2009-07-15 | 6 | Programmer 1 | 40h |
| 8 | 8 | Unit and feature test suite | 2009-07-16 | 2009-07-29 | 7 | Programmer 1 | 80h |
| 9 | 9 | update button for view forms | 2009-05-19 | 2009-05-19 |  | Programmer 2 | 8h |
| 10 | 10 | **scanner integration** | 2009-05-20 | 2009-06-23 |  | Programmer 2 | 200h |
| 11 | 10.1 | Implement scan link | 2009-05-20 | 2009-06-02 | 9 | Programmer 2 | 80h |
| 12 | 10.2 | Implement scan process | 2009-06-03 | 2009-06-09 | 11 | Programmer 2 | 40h |
| 13 | 10.3 | Integrate datamatrix decoding library | 2009-06-10 | 2009-06-16 | 2, 12 | Programmer 2 | 40h |
| 14 | 10.4 | 1D barcode scanning | 2009-06-17 | 2009-06-23 | 13 | Programmer 2 | 40h |
| 15 | 11 | java client search feature | 2009-07-01 | 2009-07-14 | 16 | Programmer 2 | 80h |
| 16 | 12 | hand held scanner integration | 2009-06-24 | 2009-06-30 | 14 | Programmer 2 | 40h |
| 17 | 13 | **CSM user authentication** | 2009-07-15 | 2009-07-16 |  | Programmer 2 | 16h |
| 18 | 13.1 | user roles | 2009-07-15 | 2009-07-16 | 15 | Programmer 2 | 16h |
